# T1_GUZMAN_HILARIO_RECURSOS

Schedule from MS Project, 2015-03-09 to 2016-02-26, costs in S/..

## Calendars

- Estándar: Mon-Fri 08:00-13:00, 14:00-17:00; Sat-Sun off.

## Resources

| Resource | Rate |
| --- | --- |
| DIRECTOR PROYECTO | 55 |
| INGENIERO AGRONOMO | 48 |
| EXPERTO GIS | 40 |
| ECONOMISTA | 42 |
| SOCIOLOGO | 40 |
| AMBIENTALISTA | 42 |
| ADMINISTRATIVO | 28 |
| TECNICOS DE APOYO | 30 |

## Schedule

| ID | WBS | Task | Type | Duration | Start | Finish | Predecessors | Total slack | Free slack | Resources | Work | Cost |
| --- | --- | --- | --- | --- | --- | --- | --- | --- | --- | --- | --- | --- |
| 1 | 1 | **TOTAL PROYECTO** |  | 254.38d | 2015-03-09 | 2016-02-26 |  | 0d |  |  | 8997.2h | 380,793.2 |
| 2 | 1.1 | **FASE 1: PREPARACIÓN PARA LA FORMULACIÓN** |  | 33d | 2015-03-09 | 2015-04-23 |  | 0.12d |  |  | 728.4h | 31,374 |
| 3 | 1.1.1 | INICIO | milestone | 0d | 2015-03-09 | 2015-03-09 |  | 0.12d | 0d | ADMINISTRATIVO |  |  |
| 4 | 1.1.2 | TERMINOS DE REFERENCIA. Objetivos. Condicionantes del Promotor |  | 10d | 2015-03-09 | 2015-03-23 | 3 | 5.12d | 5d | DIRECTOR PROYECTO [25%]; INGENIERO AGRONOMO [25%]; ECONOMISTA [50%]; SOCIOLOGO [25%]; AMBIENTALISTA [25%] | 120h | 5,380 |
| 5 | 1.1.3 | FINANCIACION |  | 7d | 2015-03-09 | 2015-03-18 | 3 | 8.12d | 8d | DIRECTOR PROYECTO [15%]; INGENIERO AGRONOMO [25%]; ECONOMISTA [50%]; SOCIOLOGO [25%] | 64.4h | 2,870 |
| 6 | 1.1.4 | COMITÉ DE COORDINACIÓN. Constitución y organización |  | 5d | 2015-03-09 | 2015-03-16 | 3 | 0.12d | 0d | DIRECTOR PROYECTO [25%] | 10h | 550 |
| 7 | 1.1.5 | EQUIPO DE FORMULACIÓN. Recursos humanos y técnicos |  | 17d | 2015-03-16 | 2015-04-08 | 4SS, 6 | 0.12d | 0d | DIRECTOR PROYECTO [25%]; ECONOMISTA [20%]; SOCIOLOGO [10%]; AMBIENTALISTA [10%]; INGENIERO AGRONOMO [10%]; ADMINISTRATIVO [10%] | 102h | 4,554 |
| 8 | 1.1.6 | METODOLOGÍA Y PLAN DE TRABAJO |  | 10d | 2015-04-01 | 2015-04-15 | 7FS-5d, 5, 4, 6SS | 0.12d | 0d | INGENIERO AGRONOMO [50%]; DIRECTOR PROYECTO [50%]; ECONOMISTA; SOCIOLOGO [50%]; AMBIENTALISTA [50%]; ADMINISTRATIVO [50%] | 280h | 11,880 |
| 9 | 1.1.7 | DOC. Nº1: Fin P.F. |  | 5d | 2015-04-15 | 2015-04-22 | 8 | 0.12d | 0d | DIRECTOR PROYECTO [50%]; ECONOMISTA [50%]; SOCIOLOGO [20%]; AMBIENTALISTA [20%]; INGENIERO AGRONOMO [20%]; ADMINISTRATIVO | 104h | 4,100 |
| 10 | 1.1.8 | Entrega al PROMOTOR. DOC. Nº1 | milestone | 0d | 2015-04-22 | 2015-04-22 | 9 | 0.12d | 0d | DIRECTOR PROYECTO [50%] |  |  |
| 11 | 1.1.9 | SEMINARIO DE LANZAMIENTO DEL PROYECTO |  | 1d | 2015-04-22 | 2015-04-23 | 10 | 0.12d | 0d | DIRECTOR PROYECTO; ECONOMISTA; SOCIOLOGO; AMBIENTALISTA; INGENIERO AGRONOMO; ADMINISTRATIVO | 48h | 2,040 |
| 12 | 1.2 | **FASE 2: ANÁLISIS Y DIAGNOSTICO** |  | 98.62d | 2015-04-23 | 2015-09-08 |  | 0.12d |  |  | 5447.2h | 232,023.2 |
| 13 | 1.2.1 | **ANÁLISIS ANTECEDENTES** |  | 15d | 2015-04-23 | 2015-05-14 | 11 | 0.12d |  |  | 315.2h | 13,392 |
| 14 | 1.2.1.1 | POLITICAS Y PROGRAMAS |  | 10d | 2015-04-23 | 2015-05-07 | 11 | 186.38d | 63.62d | DIRECTOR PROYECTO [20%]; INGENIERO AGRONOMO [50%]; ECONOMISTA [40%]; ADMINISTRATIVO [20%]; AMBIENTALISTA [20%] | 120h | 5,264 |
| 15 | 1.2.1.2 | MARCO LEGAL |  | 15d | 2015-04-23 | 2015-05-14 | 11 | 181.38d | 58.62d | DIRECTOR PROYECTO [20%]; INGENIERO AGRONOMO [20%]; ADMINISTRATIVO [50%]; ECONOMISTA [40%] | 156h | 6,168 |
| 16 | 1.2.1.3 | BASE DE DATOS EXISTENTES |  | 7d | 2015-04-23 | 2015-05-04 | 11 | 0.12d | 0d | DIRECTOR PROYECTO [20%]; INGENIERO AGRONOMO [50%] | 39.2h | 1,960 |
| 17 | 1.2.2 | **ANÁLISIS DEL ÁREA DEL PROYECTO** |  | 91.62d | 2015-05-04 | 2015-09-08 | 11, 16 | 0.12d |  |  | 2124h | 87,504 |
| 18 | 1.2.2.1 | ANÁLISIS DE RECURSOS NATURALES . INVENTARIO AMBIENTAL |  | 48.12d | 2015-05-04 | 2015-07-07 |  | 122.62d | 0d | AMBIENTALISTA; INGENIERO AGRONOMO [50%]; ECONOMISTA [40%]; ADMINISTRATIVO [20%]; EXPERTO GIS [50%] | 728h | 30,352 |
| 19 | 1.2.2.2 | INFRAESTRUCTURAS Y SERVICIOS |  | 20d | 2015-07-07 | 2015-08-04 | 18 | 122.75d | 0d | INGENIERO AGRONOMO; SOCIOLOGO [50%]; DIRECTOR PROYECTO [10%]; ADMINISTRATIVO [25%] | 296h | 12,880 |
| 20 | 1.2.2.3 | ANÁLISIS DE SECTORES PRODUCTIVOS |  | 25d | 2015-08-04 | 2015-09-08 | 14, 13, 15, 19 | 122.75d |  | DIRECTOR PROYECTO [20%]; ECONOMISTA; INGENIERO AGRONOMO [50%]; ADMINISTRATIVO [50%] | 440h | 18,200 |
| 21 | 1.2.2.4 | ANÁLISIS POBLACIONAL |  | 20d | 2015-05-04 | 2015-06-01 |  | 194.38d |  | SOCIOLOGO; INGENIERO AGRONOMO [25%]; ADMINISTRATIVO [25%] | 240h | 9,440 |
| 22 | 1.2.2.5 | SISTEMAS GENERAL TERRITORIAL DE INFORMACIÓN |  | 28.88d | 2015-05-04 | 2015-06-10 | 16 | 0d |  | SOCIOLOGO; INGENIERO AGRONOMO [25%]; ADMINISTRATIVO [25%]; EXPERTO GIS | 420h | 16,632 |
| 23 | 1.2.3 | **ANÁLISIS DE AGENTES Y PARTICIPACIÓN** |  | 82d | 2015-05-11 | 2015-09-02 |  | 0.12d |  | DIRECTOR PROYECTO [50%]; SOCIOLOGO; INGENIERO AGRONOMO [50%]; ADMINISTRATIVO [25%] | 3008h | 131,127.2 |
| 24 | 1.2.3.1 | IDENTIFICACIÓN DE AGENTES Y TIPOLOGÍA |  | 10d | 2015-05-11 | 2015-05-25 | 22SS+5d | 0.12d | 0d | DIRECTOR PROYECTO [50%]; SOCIOLOGO; INGENIERO AGRONOMO [50%]; ADMINISTRATIVO [25%] | 180h | 7,880 |
| 25 | 1.2.3.2 | ANÁLISIS DE LA PARTICIPACIÓN: ENCUESTAS CON LOS AGENTES |  | 60d | 2015-05-25 | 2015-08-17 | 24 | 0.12d | 0d | DIRECTOR PROYECTO [50%]; SOCIOLOGO; INGENIERO AGRONOMO [50%]; ADMINISTRATIVO [25%] | 1080h | 47,280 |
| 26 | 1.2.3.3 | TALLER DE PARTICIPACIÓN AGENTES PÚBLICOS |  | 2d | 2015-06-08 | 2015-06-10 | 25SS+10d | 42.12d | 0d | SOCIOLOGO; INGENIERO AGRONOMO [50%]; ADMINISTRATIVO [50%]; DIRECTOR PROYECTO [15%] | 26.4h | 1,060 |
| 27 | 1.2.3.4 | ANÁLISIS PROSPECTIVO "SIN" |  | 6d | 2015-06-10 | 2015-06-18 | 26 | 42.12d | 42d | INGENIERO AGRONOMO [25%]; ECONOMISTA [50%]; SOCIOLOGO [25%]; AMBIENTALISTA [25%]; DIRECTOR PROYECTO [15%] | 67.2h | 2,964 |
| 28 | 1.2.3.5 | INFORME DE PARTICIPACIÓN: Problemas, necesidades, oportunidades |  | 10d | 2015-08-17 | 2015-08-31 | 27, 25 | 0.12d | 0d | DIRECTOR PROYECTO [30%]; INGENIERO AGRONOMO [25%]; ECONOMISTA [50%]; SOCIOLOGO [25%]; AMBIENTALISTA [25%]; ADMINISTRATIVO [50%] | 164h | 6,720 |
| 29 | 1.2.3.6 | PRESENTACIÓN Y VALIDACIÓN DE CONCLUCIONES |  | 2d | 2015-08-31 | 2015-09-02 | 28 | 0.12d | 0d | DIRECTOR PROYECTO [25%]; INGENIERO AGRONOMO [10%]; ECONOMISTA [20%]; SOCIOLOGO [10%]; ADMINISTRATIVO [25%] | 14.4h | 607.2 |
| 30 | 1.2.4 | CONCLUCIONES Y Doc. Nº2 Presentación al PROMOTOR | milestone | 0d | 2015-09-02 | 2015-09-02 | 29 | 0.12d | 0d | DIRECTOR PROYECTO [50%]; INGENIERO AGRONOMO [25%]; ADMINISTRATIVO; ECONOMISTA [50%]; AMBIENTALISTA [20%] |  |  |
| 31 | 1.2.5 | Doc. Nº2 REVISIÓN POR EL PROMOTOR | milestone | 0d | 2015-09-02 | 2015-09-02 | 29, 30 | 0.12d | 0d |  |  |  |

| ID | WBS | Task | Type | Duration | Start | Finish | Predecessors | Total slack | Free slack | Resources | Work | Cost |
| --- | --- | --- | --- | --- | --- | --- | --- | --- | --- | --- | --- | --- |
| 32 | 1.3 | **FASE 3: DISEÑO DEL PROYECTO** |  | 99d | 2015-09-02 | 2016-01-19 |  | 0.12d |  |  | 1236h | 54,684 |
| 33 | 1.3.1 | OBJETIVOS Y METAS |  | 1d | 2015-09-02 | 2015-09-03 | 31 | 0.12d | 0d | DIRECTOR PROYECTO; INGENIERO AGRONOMO [50%] | 12h | 632 |
| 34 | 1.3.2 | ALTERNATIVA ESTRATÉGICAS: ANÁLISIS Y SELECCIÓN |  | 14d | 2015-09-03 | 2015-09-23 | 33 | 0.12d | 0d | DIRECTOR PROYECTO [50%]; INGENIERO AGRONOMO; AMBIENTALISTA [50%]; ECONOMISTA | 252h | 11,284 |
| 35 | 1.3.3 | FORMULACIÓN DE LOA COMPONENTES |  | 60d | 2015-09-23 | 2015-12-16 | 34 | 0.12d | 0d | ECONOMISTA [50%]; INGENIERO AGRONOMO [50%]; AMBIENTALISTA [50%] | 720h | 31,680 |
| 36 | 1.3.4 | DISEÑO DE LA ORGANIZACIÓN |  | 10d | 2015-12-16 | 2015-12-30 | 35 | 0.12d | 0d | INGENIERO AGRONOMO [50%]; ECONOMISTA [50%]; AMBIENTALISTA [50%] | 120h | 5,280 |
| 37 | 1.3.5 | SISTEMA DE SEGUIMIENTO Y EVALUACIÓN. Programación de la ejecución. |  | 7d | 2015-12-30 | 2016-01-08 | 36, 35 | 35.38d |  | INGENIERO AGRONOMO [50%]; ECONOMISTA [50%]; AMBIENTALISTA [50%] | 84h | 3,696 |
| 38 | 1.3.6 | PRESUPUESTACIÓN |  | 4d | 2015-12-30 | 2016-01-05 | 35, 36 | 0.12d | 0d | INGENIERO AGRONOMO [50%]; ECONOMISTA [50%]; AMBIENTALISTA [50%] | 48h | 2,112 |
| 39 | 1.3.7 | Doc. Nº3. Entrega la PROMOTOR | milestone | 0d | 2016-01-05 | 2016-01-05 | 38 | 0.12d | 0d | DIRECTOR PROYECTO |  |  |
| 40 | 1.3.8 | Doc. Nº3. REVISIÓN POR EL PROMOTOR |  | 10d | 2016-01-05 | 2016-01-19 | 39 | 0.12d | 0d |  |  |  |
| 41 | 1.4 | **FASE 4: EVALUACIÓN MULTICRITERIO** |  | 15d | 2016-01-19 | 2016-02-09 |  | 0.12d |  |  | 596h | 25,912 |
| 42 | 1.4.1 | EVALUACIÓN ECONÓMICO-FINANCIERA |  | 10d | 2016-01-19 | 2016-02-02 | 40 | 0.12d | 0d | DIRECTOR PROYECTO [25%]; INGENIERO AGRONOMO [50%]; ECONOMISTA | 140h | 6,380 |
| 43 | 1.4.2 | EVALUACIÓN SOCIAL Y CULTURAL |  | 10d | 2016-01-19 | 2016-02-02 | 40 | 0.12d | 0d | DIRECTOR PROYECTO [25%]; INGENIERO AGRONOMO [50%]; ECONOMISTA [15%]; SOCIOLOGO | 152h | 6,724 |
| 44 | 1.4.3 | EVALUACIÓN AMBIENTAL |  | 10d | 2016-01-19 | 2016-02-02 | 40 | 0.12d | 0d | DIRECTOR PROYECTO [25%]; INGENIERO AGRONOMO [50%]; ECONOMISTA [15%]; AMBIENTALISTA | 152h | 6,884 |
| 45 | 1.4.4 | EVALUACIÓN DE RIESGOS SEGURIDAD Y SALUD DEL PROYECTO |  | 10d | 2016-01-19 | 2016-02-02 | 40 | 18.38d | 0d | DIRECTOR PROYECTO [25%]; INGENIERO AGRONOMO [50%]; ECONOMISTA [15%]; TECNICOS DE APOYO | 152h | 5,924 |
| 46 | 1.4.5 | Entrega Doc. Nº4 VIABILIDAD Y SOSTENIBILIDAD | milestone | 0d | 2016-02-02 | 2016-02-02 | 45 | 18.38d |  |  |  |  |
| 47 | 1.4.6 | Revisión Doc. Nº4 |  | 5d | 2016-02-02 | 2016-02-09 | 42, 43, 44 | 0.12d | 0d |  |  |  |
| 48 | 1.5 | **FASE 5: DOCUMENTACIÓN** |  | 13.38d | 2016-02-09 | 2016-02-26 |  | 0d |  |  | 989.6h | 36,800 |
| 49 | 1.5.1 | MEMORIA |  | 6d | 2016-02-09 | 2016-02-17 | 47 | 7.38d |  | INGENIERO AGRONOMO [50%]; ECONOMISTA [25%]; DIRECTOR PROYECTO [10%]; TECNICOS DE APOYO | 88.8h | 3,360 |
| 50 | 1.5.2 | ANEJOS A LA MEMORIA |  | 10d | 2016-02-09 | 2016-02-23 | 47 | 3.38d |  | INGENIERO AGRONOMO [50%]; ECONOMISTA [25%]; DIRECTOR PROYECTO [10%]; AMBIENTALISTA [50%]; ADMINISTRATIVO [50%]; TECNICOS DE APOYO | 228h | 8,400 |
| 51 | 1.5.3 | PLANOS |  | 13.75d | 2016-02-09 | 2016-02-26 | 47 | 0d |  | INGENIERO AGRONOMO [50%]; ECONOMISTA [25%]; DIRECTOR PROYECTO [10%]; AMBIENTALISTA [50%]; ADMINISTRATIVO [50%]; TECNICOS DE APOYO; EXPERTO GIS | 308h | 11,600 |
| 52 | 1.5.4 | PLIEGO DE CONDICIONES |  | 3d | 2016-02-09 | 2016-02-12 | 47 | 10.38d |  | INGENIERO AGRONOMO [50%]; ECONOMISTA [25%]; DIRECTOR PROYECTO [10%]; AMBIENTALISTA [50%]; ADMINISTRATIVO [50%]; TECNICOS DE APOYO | 68.4h | 2,520 |
| 53 | 1.5.5 | PRESUPUESTO |  | 3d | 2016-02-09 | 2016-02-12 | 47 | 10.38d |  | ECONOMISTA [25%]; INGENIERO AGRONOMO [50%]; DIRECTOR PROYECTO [10%]; AMBIENTALISTA [50%]; ADMINISTRATIVO [50%]; TECNICOS DE APOYO | 68.4h | 2,520 |
| 54 | 1.5.6 | ESTUDIO DE SEGURIDAD Y SALUD |  | 10d | 2016-02-09 | 2016-02-23 | 47 | 3.38d |  | INGENIERO AGRONOMO [50%]; ECONOMISTA [25%]; DIRECTOR PROYECTO [10%]; AMBIENTALISTA [50%]; ADMINISTRATIVO [50%]; TECNICOS DE APOYO | 228h | 8,400 |
| 55 | 1.5.7 | Entrega del proyecto | milestone | 0d | 2016-02-26 | 2016-02-26 | 54, 49, 50, 51, 52, 53 | 0d |  |  |  |  |
