# PRACTICA CALIFICADA

Schedule from MS Project, 2015-01-03 to 2016-01-14.

## Calendars

- Estándar: Mon-Sun 08:00-13:00, 15:00-17:00. Exceptions (off unless hours are given): 2015-03-24 (24 de marxo), 2015-05-02 (2 de mayo), 2015-06-24 (24 de junio), 2015-06-25 (25 de julio), 2015-08-15 (15 de agosto).

## Resources

| Resource | Rate |
| --- | --- |
| D proyecto | 60 |
| Técnico proceso | 51 |
| Proy proceso 1 | 31 |
| Proy proceso 2 | 31 |
| Tecn. Proceso 1 | 49 |
| Tecn. Proceso 2 | 49 |
| Tecn. Mecánico 1 | 30 |
| Tecn. Mecánico 2 | 30 |
| Proy mecánico 1 | 30 |
| Proy mecánico 2 | 49 |
| Proy mecánico 3 | 31 |
| Técnico elect. | 31 |
| Proy eléctrico 1 | 49 |
| Proy eléctrico 2 | 31 |
| Tec. Instrum | 31 |
| Tec. Instrum. 1 | 48 |
| Tec. Instrum. 2 | 27 |
| Técnico civil 1 | 27 |
| Proy civil | 27 |

## Schedule

| ID | WBS | Task | Type | Duration | Start | Finish | Predecessors | Total slack | Free slack |
| --- | --- | --- | --- | --- | --- | --- | --- | --- | --- |
| 1 | 1 | **DIRECCIÓN DE PROYECTO** |  | 325d | 2015-01-03 | 2016-01-14 |  | 0d |  |
| 2 | 1.1 | **INGENIERÍA** |  | 70d | 2015-01-03 | 2015-03-25 |  | 0d |  |
| 3 | 1.1.1 | Ingenieniería básica de procesos |  | 30d | 2015-01-03 | 2015-02-06 |  | 0d |  |
| 4 | 1.1.2 | Ingeniería básica de edificios |  | 15d | 2015-02-06 | 2015-02-23 | 3 | 85d | 0d |
| 5 | 1.1.3 | Ingeniería avanzada de proceso |  | 40d | 2015-02-06 | 2015-03-25 | 3 | 0d |  |
| 6 | 1.2 | **INGENIERÍA DETALLE** |  | 90d | 2015-02-06 | 2015-05-22 |  | 40d |  |
| 7 | 1.2.1 | Ingeniería detalle de estructuras y arquitectura |  | 30d | 2015-02-06 | 2015-03-12 | 3 | 165d | 0d |
| 8 | 1.2.2 | Ingeniería de detalle motogeneradores |  | 30d | 2015-03-25 | 2015-04-28 | 5 | 0d |  |
| 9 | 1.2.3 | Ingeniería de detalle tuberías y equipos auxiliares |  | 50d | 2015-03-25 | 2015-05-22 | 5 | 30d | 0d |
| 10 | 1.2.4 | Ingeniería detalle eléctrica |  | 40d | 2015-03-25 | 2015-05-10 | 5 | 70d | 0d |
| 11 | 1.2.5 | Ingeniería detalle instrumentación y control |  | 50d | 2015-03-25 | 2015-05-22 | 5 | 70d | 0d |
| 12 | 1.2.6 | Ingeniería detalle explanación y cimentaciones |  | 20d | 2015-02-23 | 2015-03-18 | 4 | 85d | 0d |
| 13 | 1.3 | **SUMINISTRO** |  | 80d | 2015-04-28 | 2015-07-31 |  | 0d |  |
| 14 | 1.3.1 | Suministro equipos auxiliares |  | 40d | 2015-05-22 | 2015-07-08 | 9 | 40d |  |
| 15 | 1.3.2 | Suministro motogeneradores |  | 80d | 2015-04-28 | 2015-07-31 | 8 | 0d |  |
| 16 | 1.3.3 | Suministro tuberias y accesorios |  | 50d | 2015-05-22 | 2015-07-20 | 9 | 30d |  |
| 17 | 1.3.4 | Suministro equipos electricos |  | 60d | 2015-05-10 | 2015-07-20 | 10 | 70d |  |
| 18 | 1.3.5 | Suministro instrumentación y sistema control |  | 50d | 2015-05-22 | 2015-07-20 | 11 | 70d |  |
| 19 | 1.4 | **CONSTRUCCIÓN MONTAJE** |  | 220d | 2015-03-12 | 2015-11-24 |  | 45d |  |
| 20 | 1.4.1 | Dirección de contrucción | milestone | 0d | 2015-04-22 | 2015-04-22 | 21 | 230d |  |
| 21 | 1.4.2 | Explanación construcción y cimentaciones |  | 30d | 2015-03-18 | 2015-04-22 | 12 | 85d | 0d |
| 22 | 1.4.3 | Contrucción estrutura edificios |  | 50d | 2015-03-12 | 2015-05-10 | 7 | 165d | 0d |
| 23 | 1.4.4 | Cerramientos y acabados |  | 40d | 2015-05-10 | 2015-06-27 | 22 | 165d |  |
| 24 | 1.4.5 | Montaje motogeneradores |  | 20d | 2015-07-31 | 2015-08-24 | 21, 15 | 0d |  |
| 25 | 1.4.6 | Montaje tuberíaas y equipos auxiliares |  | 40d | 2015-08-24 | 2015-10-09 | 24, 14, 16 | 0d |  |
| 26 | 1.4.7 | Montaje electricidad e intrumentación |  | 40d | 2015-10-09 | 2015-11-24 | 17, 18, 25 | 0d |  |

| ID | WBS | Task | Duration | Start | Finish | Predecessors | Total slack | Free slack |
| --- | --- | --- | --- | --- | --- | --- | --- | --- |
| 27 | 1.5 | **PRUEBA Y PUESTA EN SERVICIO** | 85d | 2015-10-09 | 2016-01-14 |  | 0d |  |
| 28 | 1.5.1 | Pruebas equipos en vacío | 15d | 2015-11-01 | 2015-11-18 | 29, 24 | 20d |  |
| 29 | 1.5.2 | Pruebas hidráulicas tuberías y equipos | 20d | 2015-10-09 | 2015-11-01 | 25 | 20d | 0d |
| 30 | 1.5.3 | Pruebas eléctricas | 15d | 2015-11-24 | 2015-12-11 | 26 | 0d |  |
| 31 | 1.5.4 | Pruebas instrumentos y sist. Control | 15d | 2015-11-24 | 2015-12-11 | 26 | 0d |  |
| 32 | 1.5.5 | Puesta en marcha | 20d | 2015-12-11 | 2016-01-03 | 28, 30, 31 | 0d |  |
| 33 | 1.5.6 | Puesta en operación | 10d | 2016-01-03 | 2016-01-14 | 32 | 0d |  |
| 34 | 1.5.7 | Garantía y recepción | 10d | 2016-01-03 | 2016-01-14 | 32, 23 | 0d |  |
