# T2_GUZMAN_HILARIO_T2_recursos-autoajuste

Schedule from MS Project, 2015-11-16 to 2016-12-23, costs in S/..

## Calendars

- Estándar: Mon-Fri 08:00-13:00, 14:00-17:00; Sat-Sun off. Exceptions (off unless hours are given): 2015-12-08 (Inmaculada Concepción), 2015-12-25 (Natividad del Señor), 2016-01-01 (Año nuevo), 2016-03-31 (Jueves Santo), 2016-04-01 (Viernes Santo), 2016-05-01 (Día del trabajador), 2016-06-29 (Fiesta de San Pedro y San Pablo), 2016-07-28 to 2016-07-29 (Fiestas Patrias), 2016-08-31 (Fiesta de Santa Rosa de Lima), 2016-10-08 (Celebración del Combate de Angamos).

## Resources

| Resource | Rate |
| --- | --- |
| Técnico | 27.28 |
| Topografo | 24.86 |
| Peón | 13.53 |
| Cuadrilla | 28.25 |
| Cuadrilla fontanería | 36.62 |
| Cuadrilla estructuras | 34.62 |
| Cuadrilla pintores | 34.51 |
| Cuadrilla carpinteros | 35.13 |
| Cuadrilla electricistas | 29.17 |
| Excavadora | 49 |
| Hormigonera | 32 |
| Camión | 48 |
| Vibrador | 43 |

## Schedule

| ID | Task | Duration | Start | Finish | Predecessors | Total slack | Free slack | Resources | Work | Cost |
| --- | --- | --- | --- | --- | --- | --- | --- | --- | --- | --- |
| 1 | Anteproyecto | 3w | 2015-11-16 | 2015-12-07 |  | 0d |  | Técnico [200%] | 240h | 6,547.2 |
| 2 | Licencia de obras | 6w | 2015-12-07 | 2016-01-21 | 1 | 5d |  |  |  |  |
| 3 | Proyecto de ejecución | 7w | 2015-12-07 | 2016-01-28 | 1 | 0d |  | Técnico [300%] | 840h | 22,915.2 |
| 4 | Instalaciones provisionales | 1w | 2016-01-28 | 2016-02-04 | 2, 3 | 0d |  | Cuadrilla | 40h | 1,130 |
| 5 | Replanteo | 0.5w | 2016-01-28 | 2016-02-01 | 2, 3 | 2.5d |  | Topografo; Peón | 40h | 767.8 |
| 6 | Excavación | 3w | 2016-02-04 | 2016-02-25 | 4, 5 | 0d |  | Peón [200%]; Excavadora [200%] | 480h | 15,007.2 |
| 7 | Arquetas | 1w | 2016-02-25 | 2016-03-03 | 6 | 25d |  | Cuadrilla [200%]; Peón | 120h | 2,801.2 |
| 8 | Tuberías de saneamiento | 3w | 2016-02-25 | 2016-03-17 | 6 | 15d |  | Cuadrilla fontanería | 120h | 4,394.4 |
| 9 | Zapatas | 2w | 2016-02-25 | 2016-03-10 | 6 | 0d |  | Cuadrilla; Hormigonera | 160h | 4,820 |
| 10 | Estructura metálica | 4w | 2016-03-10 | 2016-04-11 | 9 | 0d |  | Cuadrilla estructuras; Peón [200%] | 480h | 9,868.8 |
| 11 | Pintura intumescente | 1.5w | 2016-04-11 | 2016-04-20 | 10 | 22.5d | 0d | Cuadrilla pintores [200%] | 120h | 4,141.2 |
| 12 | Compactado Zahorra | 3w | 2016-04-11 | 2016-05-02 | 7, 8, 10 | 0d |  | Cuadrilla [200%]; Peón [300%]; Camión; Vibrador | 840h | 22,570.8 |
| 13 | Solera | 3w | 2016-05-02 | 2016-05-23 | 12 | 0d |  | Cuadrilla; Peón [300%]; Hormigonera | 600h | 12,100.8 |
| 14 | Cubierta nave | 8w | 2016-04-20 | 2016-06-15 | 11 | 22.5d |  | Cuadrilla; Peón [200%] | 640h | 13,369.6 |
| 15 | Cerramiento nave | 8w | 2016-05-23 | 2016-07-19 | 11, 13 | 0d |  | Cuadrilla [300%]; Peón [200%] | 1600h | 35,779.2 |
| 16 | Forjados | 2w | 2016-04-20 | 2016-05-04 | 11 | 72.5d | 0d | Cuadrilla [200%]; Peón [200%] | 320h | 6,684.8 |
| 17 | Cubierta oficial | 3w | 2016-05-04 | 2016-05-25 | 16 | 72.5d | 17.5d | Cuadrilla; Peón | 240h | 5,013.6 |
| 18 | Cerramiento oficinas | 4w | 2016-05-23 | 2016-06-20 | 11, 13 | 20d | 0d | Cuadrilla; Peón [200%] | 480h | 8,849.6 |
| 19 | Enfoscado cemento | 9w | 2016-07-19 | 2016-09-23 | 14, 15, 18 | 0d |  | Cuadrilla [300%]; Peón [200%] | 1800h | 40,251.6 |
| 20 | Carpintería exterior | 3w | 2016-07-19 | 2016-08-11 | 15, 18 | 40d | 0d | Cuadrilla carpinteros | 120h | 4,215.6 |
| 21 | Tabiquería oficinas | 4w | 2016-06-20 | 2016-07-19 | 17, 18 | 55d | 0d | Cuadrilla [200%]; Peón | 480h | 11,204.8 |
| 22 | Enlucido de yeso | 2w | 2016-08-11 | 2016-08-25 | 20, 21 | 40d | 0d | Cuadrilla [200%]; Peón [300%] | 400h | 7,767.2 |
| 23 | Alicatados | 2w | 2016-10-28 | 2016-11-11 | 31 | 0d |  | Cuadrilla; Peón [200%] | 240h | 4,424.8 |
| 24 | Falso techo | 3w | 2016-08-25 | 2016-09-16 | 22 | 40d |  | Cuadrilla; Peón [200%] | 360h | 6,637.2 |
| 25 | Carpintería interior | 2w | 2016-11-11 | 2016-11-25 | 23, 24 | 0d |  | Cuadrilla carpinteros | 80h | 2,810.4 |
| 26 | Pintura oficinas | 4w | 2016-11-25 | 2016-12-23 | 25 | 0d |  | Cuadrilla pintores | 160h | 5,521.6 |
| 27 | Pintura exterior | 6w | 2016-09-23 | 2016-11-04 | 19, 20 | 10d | 0d | Cuadrilla pintores [300%] | 720h | 24,847.2 |
| 28 | Pintura Interior | 5w | 2016-09-23 | 2016-10-28 | 19, 20 | 40d |  | Cuadrilla pintores [300%] | 600h | 20,706 |
| 29 | Exteriores | 3w | 2016-11-04 | 2016-11-25 | 27 | 10d | 0d | Cuadrilla; Peón [200%] | 360h | 6,637.2 |
| 30 | Vallado perimetral | 2w | 2016-11-25 | 2016-12-09 | 29 | 10d |  | Cuadrilla | 80h | 2,260 |
| 31 | Instalación eléctrica | 5w | 2016-09-23 | 2016-10-28 | 19 | 0d |  | Cuadrilla electricistas | 200h | 5,834 |
| 32 | Instalación fontanería | 5w | 2016-07-19 | 2016-08-25 | 21 | 85d |  | Cuadrilla fontanería | 200h | 7,324 |
| 33 | Protección incendios | 4w | 2016-06-20 | 2016-07-19 | 18 | 110d |  | Cuadrilla | 160h | 4,520 |
